# 东科 Vth -1V

Schedule from a web Gantt chart, 2025-09-29 to 2026-02-13.
Saturdays and Sundays are off

## Schedule

| ID | WBS | Task | Duration | Start | Finish | Predecessors | Complete | Status |
| --- | --- | --- | --- | --- | --- | --- | --- | --- |
| 2 | 1 | **1st Learning Cycle** | 100d | 2025-09-29 | 2026-02-13 |  | 1% |  |
| 3 | 1.1 | kick-off | 1d | 2025-09-29 | 2025-09-29 |  | 100% |  |
| 4 | 1.2 | 项目立项会议 | 1d | 2025-10-13 | 2025-10-13 |  |  |  |
| 5 | 1.3 | W/S | 20d | 2025-10-15 | 2025-11-11 |  |  |  |
| 6 | 1.4 | F/O | 3d | 2025-11-12 | 2025-11-14 | 5 |  | waiting |
| 7 | 1.5 | samples | 35d | 2025-11-17 | 2026-01-02 | 6 |  | waiting |
| 8 | 1.6 | RE 1000H | 30d | 2026-01-05 | 2026-02-13 | 7 |  | waiting |
